# Development Plan

Schedule from MS Project, 2004-06-14 to 2004-11-19, costs in ￥.
Microsoft

## Calendars

- Standard: Mon-Fri 08:00-12:00, 13:00-17:00; Sat-Sun off.

## Resources

| Resource | Group | Rate |
| --- | --- | --- |
| Ju Weihua |  |  |
| Yang Yan |  |  |
| Out Source |  |  |
| wang qian | Manager | 100 |
| JJ |  | 100 |
| YY |  | 100 |
| Developer1 |  | 100 |
| Developer2 |  |  |
| Analyst |  | 100 |

## Schedule

| ID | WBS | Task | Duration | Start | Finish | Predecessors | Total slack | Constraint | Resources | Work | Cost |
| --- | --- | --- | --- | --- | --- | --- | --- | --- | --- | --- | --- |
| 1 | 1 | **Product/Market/Tech Research** | 35d? | 2004-06-14 | 2004-08-01 |  | 0d |  | Ju Weihua; Yang Yan | 3128h | 256,800 |
| 2 | 1.1 | Research Relevant Product | 35d? | 2004-06-14 | 2004-08-01 |  | 0d | finish no earlier than 2004-08-01 | wang qian; JJ; YY | 840h | 84,000 |
| 3 | 1.2 | Make Main Requirement | 35d? | 2004-06-14 | 2004-08-01 |  | 0d | finish no earlier than 2004-08-01 | wang qian; JJ; YY | 840h | 84,000 |
| 4 | 1.3 | Technical Research | 35d? | 2004-06-14 | 2004-08-01 |  | 0d | finish no earlier than 2004-08-01 | wang qian; JJ; YY | 840h | 84,000 |
| 5 | 1.4 | Review legal issues | 1d | 2004-06-21 | 2004-06-21 |  | 29d |  | wang qian; YY; JJ | 24h | 2,400 |
| 6 | 1.5 | Draft Initial Development Plan | 1d? | 2004-06-21 | 2004-06-21 |  | 29d |  | JJ; YY; wang qian | 24h | 2,400 |
| 7 | 2 | **Plan** | 5d? | 2004-08-02 | 2004-08-06 | 1 | 0d |  |  | 120h | 12,000 |
| 8 | 2.1 | Development Plan | 5d? | 2004-08-02 | 2004-08-06 |  | 0d | finish no earlier than 2004-08-01 | wang qian; JJ; YY | 120h | 12,000 |
| 9 | 2.2 | Test Plan | 2d | 2004-08-02 | 2004-08-03 |  | 3d |  |  |  |  |
| 10 | 2.3 | Assign Resource | 2d | 2004-08-02 | 2004-08-03 |  | 3d |  |  |  |  |
| 11 | 3 | **Design** | 20d | 2004-08-09 | 2004-09-03 | 7 | 0d |  | wang qian | 2240h | 176,000 |
| 12 | 3.1 | Top Level Desgin | 5d | 2004-08-09 | 2004-08-13 |  | 15d |  | JJ; YY | 80h | 8,000 |
| 13 | 3.2 | **Detail Desgin of server** | 10d | 2004-08-09 | 2004-08-20 |  | 10d |  | Ju Weihua; Yang Yan | 1200h | 104,000 |
| 14 | 3.2.1 | Authentication | 10d | 2004-08-09 | 2004-08-20 |  | 10d |  | JJ; YY | 160h | 16,000 |
| 15 | 3.2.2 | Authorization | 10d | 2004-08-09 | 2004-08-20 |  | 10d |  | JJ; YY | 160h | 16,000 |
| 16 | 3.2.3 | Key Management | 10d | 2004-08-09 | 2004-08-20 |  | 10d |  | JJ; YY | 160h | 16,000 |
| 17 | 3.2.4 | Doc Management | 10d | 2004-08-09 | 2004-08-20 |  | 10d |  | JJ; YY | 160h | 16,000 |
| 18 | 3.2.5 | User Management | 10d | 2004-08-09 | 2004-08-20 |  | 10d |  | JJ; YY | 160h | 16,000 |
| 19 | 3.2.6 | Server administration and integration Tools | 5d | 2004-08-09 | 2004-08-13 |  | 15d |  | JJ; YY | 80h | 8,000 |
| 20 | 3.2.7 | Auditing Module | 5d | 2004-08-09 | 2004-08-13 |  | 15d |  | JJ; YY | 80h | 8,000 |
| 21 | 3.2.8 | External connector and interface | 5d | 2004-08-09 | 2004-08-13 |  | 15d |  | JJ; YY | 80h | 8,000 |
| 22 | 3.3 | **Detail Design of Client apps** | 20d | 2004-08-09 | 2004-09-03 |  | 0d |  | Ju Weihua; Yang Yan | 800h | 48,000 |
| 23 | 3.3.1 | Outlook PlugIn | 20d | 2004-08-09 | 2004-09-03 |  | 0d |  | JJ; YY | 320h | 32,000 |
| 24 | 3.3.2 | PDF PlugIn | 10d | 2004-08-09 | 2004-08-20 |  | 10d |  | JJ; YY | 160h | 16,000 |

Notes:
- 1: Research existing product / Clarify the Main Requirements / design the main architecture

| ID | WBS | Task | Duration | Start | Finish | Predecessors | Total slack | Resources | Work | Cost |
| --- | --- | --- | --- | --- | --- | --- | --- | --- | --- | --- |
| 25 | 4 | **Development** | 30d | 2004-09-06 | 2004-10-15 | 11 | 0d |  | 1840h | 140,000 |
| 26 | 4.1 | **Server Components** | 20d | 2004-09-06 | 2004-10-01 |  | 10d | Ju Weihua; Yang Yan | 1480h | 116,000 |
| 27 | 4.1.1 | Authentication | 20d | 2004-09-06 | 2004-10-01 |  | 10d | Developer1 | 160h | 16,000 |
| 28 | 4.1.2 | Authorization | 20d | 2004-09-06 | 2004-10-01 |  | 10d | Developer1 | 160h | 16,000 |
| 29 | 4.1.3 | Key Management | 20d | 2004-09-06 | 2004-10-01 |  | 10d | Developer1 | 160h | 16,000 |
| 30 | 4.1.4 | Doc Management | 20d | 2004-09-06 | 2004-10-01 |  | 10d | Developer1 | 160h | 16,000 |
| 31 | 4.1.5 | User Management | 20d | 2004-09-06 | 2004-10-01 |  | 10d | Developer1 | 160h | 16,000 |
| 32 | 4.1.6 | Server administration / integration Tools | 15d | 2004-09-06 | 2004-09-24 |  | 15d | Developer1 | 120h | 12,000 |
| 33 | 4.1.7 | Auditing/Reporting | 15d | 2004-09-06 | 2004-09-24 |  | 15d | Developer1 | 120h | 12,000 |
| 34 | 4.1.8 | external connector and interface | 15d | 2004-09-06 | 2004-09-24 |  | 15d | Developer1 | 120h | 12,000 |
| 35 | 4.2 | **Client Applications** | 30d | 2004-09-06 | 2004-10-15 |  | 0d |  | 360h | 24,000 |
| 36 | 4.2.1 | client for outlook | 30d | 2004-09-06 | 2004-10-15 |  | 0d | Developer1 | 240h | 24,000 |
| 37 | 4.2.2 | client for pdf | 15d | 2004-09-06 | 2004-09-24 |  | 15d | Developer2 | 120h |  |
| 38 | 5 | **Test** | 20d | 2004-10-18 | 2004-11-12 | 25 | 0d |  | 496h | 17,600 |
| 39 | 5.1 | Write Test Case | 5d | 2004-10-18 | 2004-10-22 |  | 15d | Developer1 | 40h | 4,000 |
| 40 | 5.2 | Integration Test | 20d | 2004-10-18 | 2004-11-12 |  | 0d | Ju Weihua; Yang Yan | 320h |  |
| 41 | 5.3 | Performance / Reliability test | 15d | 2004-10-18 | 2004-11-05 |  | 5d | Developer1 | 120h | 12,000 |
| 42 | 5.4 | Test Review | 2d | 2004-10-18 | 2004-10-19 |  | 18d | Developer1 | 16h | 1,600 |
| 43 | 6 | **Productize** | 5d? | 2004-11-15 | 2004-11-19 | 38 | 0d |  | 184h | 18,400 |
| 44 | 6.1 | **Documentation** | 5d? | 2004-11-15 | 2004-11-19 |  | 0d |  | 136h | 13,600 |
| 45 | 6.1.1 | WhitePaper | 2d | 2004-11-15 | 2004-11-16 |  | 3d | Developer1 | 16h | 1,600 |
| 46 | 6.1.2 | Installation Guider | 2d | 2004-11-15 | 2004-11-16 |  | 3d | Developer1 | 16h | 1,600 |
| 47 | 6.1.3 | User Manual | 5d | 2004-11-15 | 2004-11-19 |  | 0d | Developer1 | 40h | 4,000 |
| 48 | 6.1.4 | Administration Guider | 5d | 2004-11-15 | 2004-11-19 |  | 0d | Developer1 | 40h | 4,000 |
| 49 | 6.1.5 | External Interface Guider | 2d | 2004-11-15 | 2004-11-16 |  | 3d | Developer1 | 16h | 1,600 |
| 50 | 6.1.6 | Release Notes | 1d? | 2004-11-15 | 2004-11-15 |  | 4d | Developer1 | 8h | 800 |
| 51 | 6.2 | Marketing Preparation | 5d | 2004-11-15 | 2004-11-19 |  | 0d | wang qian | 40h | 4,000 |
| 52 | 6.3 | Product Training | 1d? | 2004-11-15 | 2004-11-15 |  | 4d | Developer1 | 8h | 800 |
| 53 | 7 | Pilot | 10d | 2004-06-21 | 2004-07-02 |  | 95d |  |  |  |
